# 风控资管系统项目规划

Schedule from MS Project, 2012-10-29 to 2013-01-04, A marks actual dates.

## Calendars

- 标准: Mon-Fri 08:00-12:00, 13:00-17:00; Sat-Sun off.

## Resources

| Resource |
| --- |
| 风控指标计算公式 |
| 各模块列表内容规划 |
| 需求文档 |
| 详细设计 |

## Schedule

| ID | WBS | Task | Type | Duration | Start | Finish | Predecessors | Complete | Remaining | Total slack | Free slack | Constraint | Resources | Work |
| --- | --- | --- | --- | --- | --- | --- | --- | --- | --- | --- | --- | --- | --- | --- |
| 1 | 1 | 需求文档 |  | 10d? | 2012-10-29 | 2012-11-09 |  |  |  | 1d | 0d | start no earlier than 2012-10-29 | 风控指标计算公式; 各模块列表内容规划 | 160h |
| 2 | 2 | 系统概要设计 |  | 5d? | 2012-11-05 A | 2012-11-09 | 1SS+5d | 20% | 4d? | 0d |  | start no earlier than 2012-11-05 |  |  |
| 3 | 3 | 详细设计 |  | 5d? | 2012-11-12 | 2012-11-16 | 2 |  |  | 0d |  |  |  |  |
| 4 | 4 | 前期准备完成 | milestone | 0d | 2012-11-16 | 2012-11-16 | 3 |  |  | 2d | 0d |  |  |  |
| 6 | 5 | **风险控制服务器** |  | 10d? | 2012-11-19 | 2012-11-30 | 4 |  |  | 2d | 0d |  | 需求文档; 详细设计 | 288h |
| 7 | 5.1 | 风控前置服务模块 |  | 3d? | 2012-11-19 | 2012-11-21 | 3 |  |  | 9d |  |  | 需求文档; 详细设计 | 48h |
| 8 | 5.2 | 风险指标运算模块 |  | 5d | 2012-11-19 | 2012-11-23 | 3 |  |  | 2d | 0d |  | 详细设计; 需求文档 | 80h |
| 9 | 5.3 | 风险事件判断及处理模块 |  | 4d | 2012-11-26 | 2012-11-29 | 8 |  |  | 2d | 0d |  |  |  |
| 10 | 5.4 | 消息推送模块 |  | 1d | 2012-11-30 | 2012-11-30 | 9 |  |  | 2d |  |  |  |  |
| 11 | 5.5 | 强平处理 |  | 1d | 2012-11-30 | 2012-11-30 | 9 |  |  | 2d |  |  |  |  |
| 12 | 5.6 | 数据库实现 |  | 3d | 2012-11-19 | 2012-11-21 | 3 |  |  | 7d | 0d |  |  |  |
| 13 | 5.7 | 数据库处理模块 |  | 2d | 2012-11-22 | 2012-11-23 | 12 |  |  | 7d |  |  |  |  |
| 14 | 6 | 管理客户端 |  | 6d | 2012-11-19 | 2012-11-26 | 3 |  |  | 6d |  |  |  |  |
| 15 | 7 | **风控客户端** |  | 12d | 2012-11-19 | 2012-12-04 | 3 |  |  | 0d |  |  |  |  |
| 16 | 7.1 | UI窗口实现 |  | 8d | 2012-11-19 | 2012-11-28 |  |  |  | 0d |  |  |  |  |
| 17 | 7.2 | 报单模块 |  | 3d | 2012-11-29 | 2012-12-03 | 16 |  |  | 1d |  |  |  |  |
| 18 | 7.3 | 美工优化 |  | 4d | 2012-11-29 | 2012-12-04 | 16 |  |  | 0d |  |  |  |  |
| 19 | 8 | 系统整合调试 |  | 8d | 2012-12-05 | 2012-12-14 | 6, 14, 15 |  |  | 0d |  |  |  |  |
| 20 | 9 | 系统初步完工 | milestone | 0d | 2012-12-14 | 2012-12-14 | 19 |  |  | 0d |  |  |  |  |
| 22 | 10 | 单元测试 |  | 15d | 2012-11-19 | 2012-12-07 | 15SS, 6SS |  |  | 20d |  |  |  |  |
| 23 | 11 | 冒烟测试 |  | 8d? | 2012-12-05 | 2012-12-14 | 19SS |  |  | 15d |  |  |  |  |
| 24 | 12 | 系统测试、回归测试 |  | 10d | 2012-12-17 | 2012-12-28 | 20 |  |  | 0d |  |  |  |  |
| 25 | 13 | α测试 |  | 5d | 2012-12-31 | 2013-01-04 | 24 |  |  | 0d |  |  |  |  |
| 26 | 14 | 内部测试完成提交给资管部门试用 | milestone | 0d | 2013-01-04 | 2013-01-04 | 25 |  |  | 0d |  |  |  |  |
