# MarketMaker

Schedule from MS Project, 2014-06-09 to 2014-11-19.
Lenovo (Beijing) Limited

## Calendars

- 标准: Mon-Fri 08:00-12:00, 13:00-17:00; Sat-Sun off.

## Resources

| Resource |
| --- |
| wanhuabo |
| wuziyuan |
| haoweihua |
| liujunbo |
| miaojun |
| yangguiming |
| caiguosen |
| qiuying |
| 吴自愿 |
| qiuyin |

## Schedule

| ID | WBS | Task | Type | Duration | Start | Finish | Predecessors | Baseline start | Baseline finish | Baseline duration | Total slack | Free slack | Constraint | Deadline | Resources | Work |
| --- | --- | --- | --- | --- | --- | --- | --- | --- | --- | --- | --- | --- | --- | --- | --- | --- |
| 1 | 1 | **期权交易终端** |  | 118d | 2014-06-09 | 2014-11-19 |  |  |  |  | 0d |  |  |  |  | 2014h |
| 2 | 1.1 | 需求和可行性调研及分析 |  | 39d | 2014-06-09 | 2014-07-31 |  |  |  |  | 79d |  | finish no earlier than 2014-07-31 |  | liujunbo [25.6%] | 80h |
| 3 | 1.2 | 交易软件主窗口 |  | 12d | 2014-07-31 | 2014-08-15 |  |  |  |  | 19d |  | start no earlier than 2014-07-31 |  |  | 80h |
| 4 | 1.3 | T型报价模块(设计、开发、单元测试、bug修复) |  | 15d | 2014-07-25 | 2014-08-14 |  |  |  |  | 20d |  | start no earlier than 2014-07-25 |  | yangguiming [113.3%] | 136h |
| 5 | 1.4 | 一键下单窗口(设计、开发、单元测试、bug修复) |  | 10d | 2014-08-15 | 2014-08-28 |  |  |  |  | 59d |  | finish no earlier than 2014-08-28 |  | yangguiming [110%] | 88h |
| 6 | 1.5 | 合约选择模块(设计、开发、单元测试、bug修复) |  | 3d | 2014-08-29 | 2014-09-02 |  |  |  |  | 56d |  | start no earlier than 2014-08-29 |  | yangguiming [133.3%] | 32h |
| 7 | 1.6 | 期权策略主窗口(设计、开发、单元测试、bug修复) |  | 15d | 2014-07-25 | 2014-08-14 |  |  |  |  | 32d |  | start no earlier than 2014-07-25 |  | wuziyuan [113.3%] | 136h |
| 8 | 1.7 | 策略决策模块(代码及单元测试) |  | 6d | 2014-10-16 | 2014-10-23 |  |  |  |  | 5d |  | start no earlier than 2014-10-16 |  | qiuying | 48h |
| 9 | 1.8 | 策略决策模块(联调) |  | 5d | 2014-10-20 | 2014-10-24 |  |  |  |  | 4d |  | start no earlier than 2014-10-20 |  | qiuying [60%] | 24h |
| 10 | 1.9 | 策略分析模块-概率图和交易情境分析(设计、开发、单元测试、bug修复) |  | 10d | 2014-08-15 | 2014-08-28 |  |  |  |  | 22d |  | finish no earlier than 2014-08-28 |  | wuziyuan [110%] | 88h |
| 11 | 1.10 | 策略分析模块-盈亏图(设计、开发、单元测试、bug修复) |  | 10d | 2014-08-29 | 2014-09-11 |  |  |  |  | 12d |  | start no earlier than 2014-08-29 |  | wuziyuan [110%] | 88h |
| 12 | 1.11 | 策略主窗口、策略分析模块后续开发、单元测试、联调 |  | 17d | 2014-10-08 | 2014-10-30 |  |  |  |  | 1d |  | start no earlier than 2014-10-08 |  | wuziyuan [161.8%] | 220h |
| 13 | 1.12 | KLine模块(设计、开发、单元测试、bug修复) |  | 22d | 2014-07-31 | 2014-08-29 |  |  |  |  | 21d |  | start no earlier than 2014-07-31 |  | caiguosen [77.3%] | 136h |
| 14 | 1.13 | KLine联调(与终端联调和与行情服务器端联调) |  | 18d | 2014-10-08 | 2014-10-31 |  |  |  |  | 5d |  | finish no earlier than 2014-10-31 |  | caiguosen [33.3%] | 48h |
| 15 | 1.14 | 期权询价、执行功能(开发、单元测试、联调) |  | 10d | 2014-10-27 | 2014-11-07 |  |  |  |  | -9d | 0d | start no earlier than 2014-10-27 | 2014-10-27 | yangguiming [135%] | 108h |
| 16 | 1.15 | 获取询价通知功能(开发、单元测试、联调) |  | 5d | 2014-11-13 | 2014-11-19 |  |  |  |  | 0d |  | start no earlier than 2014-11-13 |  | yangguiming [135%] | 54h |
| 17 | 1.16 | 模块测试 |  | 28d | 2014-08-07 | 2014-09-15 |  |  |  |  | 24d | 0d | start no earlier than 2014-08-07 |  | liujunbo [67%]; miaojun [67%] | 300h |
| 18 | 1.17 | 集成测试及性能测试 |  | 8d | 2014-09-16 | 2014-09-25 | 17 | 2013-04-16 | 2013-05-27 | 30d | 37d | 0d |  |  | liujunbo [234.4%]; miaojun [234.4%] | 300h |
| 19 | 1.18 | 验收测试 |  | 2d | 2014-09-26 | 2014-09-29 | 18 | 2013-05-28 | 2013-07-01 | 25d? | 37d | 0d |  |  | liujunbo [150%]; miaojun [150%] | 48h |
| 20 | 1.19 | 正式发布 | milestone | 0d | 2014-09-29 | 2014-09-29 | 19 | 2013-07-01 | 2013-07-01 | 0d | 24d |  |  |  |  |  |

Notes:
- 2: 参考Super 8和咏春等流行的期权交易终端软件，为我们自己开发一套期权交易终端进行需求设计和可行性调研及分析。
- 3: 二、交易软件主窗口6/ 1.主窗口界面6/ 2.功能需求6/ 1)运行模式配置6/ 2)期权布局方案7/ 3)鼠标快捷下单7/ 4)改变期权T型报价内容7/ 5)弹出期权策略窗口7/ 6)增加下单板模块模式7
- 4: 1.窗口界面8/ 2.开发模式8/ 3.T型报价接口8/ 4.功能说明9/ 1)创建T型报价窗口9/ 2)设置期权9/ 3)行情订阅和退订9/ 4)点击买卖价/买卖量通知父窗口9/ 5)点击KLine图标打开KLine窗口9/ 6)改变表格列设置10/ 7)调整T型报价尺寸10/ 8)行情刷新10/ 9)配色方案10
- 5: 1.窗口界面11/ 2.开发模式13/ 3.功能需求13/ 1)指定合约13/ 2)一键下单列表框13/ 3)参数配置14/ 4)自动开平仓的说明14/ 5)持仓列表框14/ 6)资金列表框15
- 6: 1.界面16/ 2.开发模式16/ 3.需求说明16/ 1)动态取品种16/ 2)品种分交易所分底色显示16/ 3)选择合约17/ 4)模块使用场所17
- 7: 1.窗口界面19/ 2.开发模式20/ 3.需求说明20/ 1)窗口UI20/ 2)交易账号20/ 3)期权指定和选择20/ 4)策略选择21/ 5)预定义报单子窗口21/ 6)下单确认窗口21
- 10: 3.开发模式24/ 4.分析窗口更新时间24/ 6.概率图26/ 7.交易情境分析（待完善）27
- 11: 3.开发模式24/ 4.分析窗口更新时间24/ 5.盈亏图
- 12: 全部完成这几个模块的开发、测试、联调任务
- 13: 1.开发模式27/ 2.单窗口/多窗口模式27/ 3.显示内容28/ 4.接口与数据28
