Schedule from MS Project, 2013-03-01 to 2013-09-16, A marks actual dates.

## Calendars

- 标准: Mon-Fri 08:00-12:00, 13:00-17:00; Sat-Sun off.

## Resources

| Resource |
| --- |
| qiuying |
| cifcotradingsystem |
| wanhuabo |
| haoweihua |
| miaojun |
| wuziyuan |
| caiguosen |
| liujunbo |
| yangguiming |

## Schedule

| ID | WBS | Task | Type | Duration | Start | Finish | Predecessors | Complete | Remaining | Baseline start | Baseline finish | Baseline duration | Total slack | Free slack | Constraint | Resources | Work | Actual work |
| --- | --- | --- | --- | --- | --- | --- | --- | --- | --- | --- | --- | --- | --- | --- | --- | --- | --- | --- |
| 1 | 1 | 整体需求分析 |  | 20d? | 2013-03-01 A | 2013-04-01 A |  | 100% |  | 2013-03-01 | 2013-04-01 | 20d? |  |  |  | liujunbo [25%] | 40h | 40h |
| 2 | 2 | 整体架构设计 |  | 22d? | 2013-03-01 A | 2013-04-01 A |  | 100% |  | 2013-03-01 | 2013-04-01 | 22d? |  |  |  | haoweihua [22.7%] | 40h | 40h |
| 3 | 3 | 代码框架建设 |  | 22d? | 2013-03-01 A | 2013-04-01 A |  | 100% |  | 2013-03-01 | 2013-04-01 | 22d? |  |  |  |  | 40h | 40h |
| 4 | 4 | 项目协调 |  | 88d? | 2013-03-01 | 2013-07-02 |  |  |  | 2013-03-01 | 2013-07-02 | 88d? | 61d |  |  | haoweihua [11.4%]; liujunbo [11.4%] | 160h |  |
| 5 | 5 | **服务端公共模块** |  | 9d? | 2013-03-01 A | 2013-03-13 |  | 95% | 0.42d? | 2013-03-01 | 2013-03-13 | 8.5d? | 78d |  |  |  | 144h | 137.2h |
| 6 | 5.1 | **通讯模块** |  | 4d? | 2013-03-01 A | 2013-03-06 A |  | 100% |  | 2013-03-01 | 2013-03-06 | 3.5d? |  |  |  |  | 32h | 32h |
| 7 | 5.1.1 | 代码实现 |  | 4d? | 2013-03-01 A | 2013-03-06 A |  | 100% |  | 2013-03-01 | 2013-03-06 | 3.5d? |  |  |  |  | 32h | 32h |
| 8 | 5.1.2 | 提交集成 | milestone | 0d | 2013-03-06 A | 2013-03-06 A | 7 | 100% |  | 2013-03-06 | 2013-03-06 | 0d |  |  |  |  |  |  |
| 9 | 5.2 | **数据库接口模块** |  | 5d? | 2013-03-01 A | 2013-03-07 A |  | 100% |  | 2013-03-01 | 2013-03-07 | 4.5d? |  |  |  |  | 40h | 40h |
| 10 | 5.2.1 | 代码实现 |  | 5d? | 2013-03-01 A | 2013-03-07 A |  | 100% |  | 2013-03-01 | 2013-03-07 | 4.5d? |  |  |  | wanhuabo; wuziyuan | 40h | 40h |
| 11 | 5.2.2 | 提交集成 | milestone | 0d | 2013-03-07 A | 2013-03-07 A | 10 | 100% |  | 2013-03-07 | 2013-03-07 | 0d |  |  |  | wanhuabo; wuziyuan |  |  |
| 12 | 5.3 | **服务端内部通知模块** |  | 9d? | 2013-03-01 A | 2013-03-13 |  | 91% | 0.85d? | 2013-03-01 | 2013-03-13 | 8.5d? | 78d |  |  |  | 72h | 65.2h |
| 13 | 5.3.1 | 需求设计 |  | 1d? | 2013-03-01 A | 2013-03-01 A |  | 100% |  | 2013-03-01 | 2013-03-01 | 1d? |  |  |  | haoweihua | 8h | 8h |
| 14 | 5.3.2 | 接口设计、详细设计 |  | 3d? | 2013-03-04 A | 2013-03-06 A | 13 | 100% |  | 2013-03-04 | 2013-03-06 | 2.5d? |  |  |  | haoweihua | 24h | 24h |
| 15 | 5.3.3 | 代码实现 |  | 3d? | 2013-03-07 A | 2013-03-11 | 14 | 92% | 0.25d? | 2013-03-06 | 2013-03-11 | 3d? | 79.4d | 0d |  | haoweihua | 24h | 22h |
| 16 | 5.3.4 | 测试代码实现、单元测试、Bug修改 |  | 2d? | 2013-03-12 A | 2013-03-13 | 15 | 70% | 0.6d? | 2013-03-11 | 2013-03-13 | 2d? | 78d | 0d |  | haoweihua | 16h | 11.2h |
| 17 | 5.3.5 | 提交集成 | milestone | 0d | 2013-03-13 | 2013-03-13 | 16 |  |  | 2013-03-13 | 2013-03-13 | 0d | 78d |  |  | haoweihua |  |  |
| 18 | 6 | **基础数据** |  | 80d? | 2013-03-01 A | 2013-06-20 |  | 90% | 8.06d? | 2013-03-01 | 2013-03-19 | 12.5d? | 7d |  |  |  | 2264h | 2048h |
| 19 | 6.1 | **经纪公司、服务器组、服务器、委托交易账号管理模块** |  | 80d? | 2013-03-01 A | 2013-06-20 |  | 91% | 7.59d? | 2013-03-01 | 2013-03-13 | 9d? | 7d |  |  |  | 632h | 572.8h |
| 20 | 6.1.1 | 需求设计 |  | 1d? | 2013-03-01 A | 2013-04-04 A |  | 100% |  | 2013-03-01 | 2013-03-01 | 0.5d? |  |  |  | liujunbo | 8h | 8h |
| 21 | 6.1.2 | 管理终端UI设计 |  | 1d? | 2013-04-05 A | 2013-04-08 A | 20 | 100% |  | 2013-03-01 | 2013-03-01 | 0.5d? |  |  |  | liujunbo | 8h | 8h |
| 22 | 6.1.3 | 接口设计、详细设计 |  | 21d? | 2013-04-08 A | 2013-05-06 | 21 | 95% | 1d? | 2013-03-04 | 2013-03-05 | 2d? | 0d |  |  | wanhuabo; wuziyuan | 176h | 168h |
| 23 | 6.1.4 | 服务端代码实现及单元测试 |  | 20d? | 2013-05-07 A | 2013-06-03 | 22 | 93% | 1.5d? | 2013-03-06 | 2013-03-12 | 5d? | 17.1d | 0d |  | wanhuabo [50%]; wuziyuan | 160h | 148h |
| 24 | 6.1.5 | 管理终端代码实现及单元测试 |  | 4d | 2013-05-07 A | 2013-05-10 A | 22 | 100% |  |  |  |  |  |  |  | wuziyuan | 32h | 32h |
| 25 | 6.1.6 | QA模块测试 |  | 29d? | 2013-05-13 A | 2013-06-20 | 24, 23 | 90% | 2.9d? | 2013-03-13 | 2013-03-13 | 1d? | 7d | 0d | start no earlier than 2013-05-13 | miaojun | 232h | 208.8h |
| 26 | 6.1.7 | Bug修改 |  | 2d? | 2013-06-04 | 2013-06-05 | 23, 24 |  |  | 2013-03-13 | 2013-03-13 | 1d? | 18d | 11d |  | wuziyuan | 16h |  |
| 27 | 6.1.8 | 提交集成 | milestone | 0d | 2013-06-20 | 2013-06-20 | 26, 25 |  |  | 2013-03-13 | 2013-03-13 | 0d | 7d |  |  | wuziyuan |  |  |

| ID | WBS | Task | Type | Duration | Start | Finish | Predecessors | Complete | Remaining | Baseline start | Baseline finish | Baseline duration | Total slack | Free slack | Constraint | Resources | Work | Actual work |
| --- | --- | --- | --- | --- | --- | --- | --- | --- | --- | --- | --- | --- | --- | --- | --- | --- | --- | --- |
| 28 | 6.2 | **用户、角色、权限及机构模块管理模块** |  | 80d? | 2013-03-01 A | 2013-06-20 |  | 86% | 11.38d? | 2013-03-01 | 2013-03-19 | 12.5d? | 7d |  |  |  | 728h | 633.6h |
| 29 | 6.2.1 | 需求设计 |  | 2d? | 2013-03-01 A | 2013-04-02 A |  | 100% |  | 2013-03-01 | 2013-03-01 | 1d? |  |  |  | liujunbo | 16h | 16h |
| 30 | 6.2.2 | 管理终端UI设计 |  | 1d? | 2013-04-03 A | 2013-04-03 A | 29 | 100% |  | 2013-03-04 | 2013-03-04 | 1d? |  |  |  | liujunbo | 8h | 8h |
| 31 | 6.2.3 | 接口设计、详细设计 |  | 23d? | 2013-04-04 A | 2013-05-06 | 30 | 91% | 2d? | 2013-03-05 | 2013-03-07 | 2.5d? | 0d |  |  | wanhuabo; wuziyuan | 200h | 184h |
| 32 | 6.2.4 | 服务端代码实现及单元测试 |  | 20d? | 2013-05-07 A | 2013-06-03 | 31 | 80% | 4d? | 2013-03-07 | 2013-03-18 | 7d? | 14.2d | 0d |  | wanhuabo [50%]; wuziyuan [50%] | 96h | 80h |
| 33 | 6.2.5 | 管理终端代码实现及单元测试 |  | 20d | 2013-05-07 A | 2013-06-03 A | 31 | 100% |  |  |  |  |  |  |  | wuziyuan | 160h | 160h |
| 34 | 6.2.6 | QA模块测试 |  | 29d? | 2013-05-13 A | 2013-06-20 | 33, 32 | 80% | 5.8d? | 2013-03-18 | 2013-03-19 | 1d? | 7d | 0d | start no earlier than 2013-05-13 | miaojun | 232h | 185.6h |
| 35 | 6.2.7 | Bug修改 |  | 2d? | 2013-06-04 | 2013-06-05 | 32, 33 |  |  | 2013-03-18 | 2013-03-19 | 1d? | 18d | 11d |  | wuziyuan | 16h |  |
| 36 | 6.2.8 | 提交集成 | milestone | 0d | 2013-06-20 | 2013-06-20 | 35, 34 |  |  | 2013-03-19 | 2013-03-19 | 0d | 7d |  |  | wuziyuan |  |  |
| 37 | 6.3 | **理财产品模块** |  | 80d? | 2013-03-01 A | 2013-06-20 |  | 93% | 5.47d? | 2013-03-01 | 2013-03-13 | 9d? | 7d |  |  |  | 456h | 424.8h |
| 38 | 6.3.1 | 需求设计 |  | 1d? | 2013-03-01 A | 2013-04-02 A |  | 100% |  | 2013-03-01 | 2013-03-01 | 0.5d? |  |  |  | liujunbo | 8h | 8h |
| 39 | 6.3.2 | 管理终端UI设计 |  | 1d? | 2013-04-03 A | 2013-04-04 A | 38 | 100% |  | 2013-03-01 | 2013-03-01 | 0.5d? |  |  |  | liujunbo | 8h | 8h |
| 40 | 6.3.3 | 接口设计、详细设计 |  | 23d? | 2013-04-04 A | 2013-05-06 A | 39 | 100% |  | 2013-03-04 | 2013-03-05 | 2d? |  |  |  | wuziyuan | 184h | 184h |
| 41 | 6.3.4 | 服务端/管理终端代码实现及单元测试 |  | 2d? | 2013-05-07 A | 2013-05-08 A | 40 | 100% |  | 2013-03-06 | 2013-03-12 | 5d? |  |  |  | wuziyuan | 16h | 16h |
| 42 | 6.3.5 | QA模块测试 |  | 29d? | 2013-05-09 A | 2013-06-20 | 41 | 90% | 2.9d? | 2013-03-13 | 2013-03-13 | 1d? | 7d | 0d |  | miaojun | 232h | 208.8h |
| 43 | 6.3.6 | Bug修改 |  | 1d? | 2013-05-09 | 2013-05-09 | 41 |  |  | 2013-03-13 | 2013-03-13 | 1d? | 37d | 30d |  | wuziyuan | 8h |  |
| 44 | 6.3.7 | 提交集成 | milestone | 0d | 2013-06-20 | 2013-06-20 | 43, 42 |  |  | 2013-03-13 | 2013-03-13 | 0d | 7d |  |  | wuziyuan |  |  |
| 45 | 6.4 | **交易策略模块** |  | 80d? | 2013-03-01 A | 2013-06-20 |  | 93% | 5.57d? | 2013-03-01 | 2013-03-18 | 11.5d? | 7d |  |  |  | 448h | 416.8h |
| 46 | 6.4.1 | 需求设计 |  | 1d? | 2013-03-01 A | 2013-04-03 A |  | 100% |  | 2013-03-01 | 2013-03-01 | 1d? |  |  |  | liujunbo | 8h | 8h |
| 47 | 6.4.2 | 管理终端UI设计 |  | 1d? | 2013-04-04 A | 2013-04-09 A | 46 | 100% |  | 2013-03-04 | 2013-03-04 | 1d? |  |  |  | liujunbo | 8h | 8h |
| 48 | 6.4.3 | 接口设计、详细设计 |  | 22d? | 2013-04-05 A | 2013-05-06 A | 47 | 100% |  | 2013-03-05 | 2013-03-07 | 2.5d? |  |  |  | wuziyuan | 176h | 176h |
| 49 | 6.4.4 | 服务端/管理终端代码实现及单元测试 |  | 2d? | 2013-05-07 A | 2013-05-08 A | 48 | 100% |  | 2013-03-07 | 2013-03-15 | 6d? |  |  |  | wuziyuan | 16h | 16h |
| 50 | 6.4.5 | QA模块测试 |  | 29d? | 2013-05-09 A | 2013-06-20 | 49 | 90% | 2.9d? | 2013-03-15 | 2013-03-18 | 1d? | 7d | 0d |  | miaojun | 232h | 208.8h |
| 51 | 6.4.6 | Bug修改 |  | 1d? | 2013-05-09 | 2013-05-09 | 49 |  |  | 2013-03-15 | 2013-03-18 | 1d? | 37d | 30d |  | wuziyuan | 8h |  |
| 52 | 6.4.7 | 提交集成 | milestone | 0d | 2013-06-20 | 2013-06-20 | 51, 50 |  |  | 2013-03-18 | 2013-03-18 | 0d | 7d |  |  | wuziyuan |  |  |

| ID | WBS | Task | Type | Duration | Start | Finish | Predecessors | Complete | Remaining | Baseline start | Baseline finish | Baseline duration | Total slack | Free slack | Resources | Work | Actual work |
| --- | --- | --- | --- | --- | --- | --- | --- | --- | --- | --- | --- | --- | --- | --- | --- | --- | --- |
| 53 | 7 | **登录及消息管理** |  | 48d? | 2013-03-01 A | 2013-05-07 |  | 58% | 19.97d? | 2013-03-01 | 2013-03-18 | 12d? | 39d |  |  | 200h | 116.8h |
| 54 | 7.1 | **登录模块** |  | 9d? | 2013-03-01 A | 2013-03-13 |  | 76% | 2.16d? | 2013-03-01 | 2013-03-13 | 9d? | 78d |  |  | 80h | 60.8h |
| 55 | 7.1.1 | 需求设计 |  | 1d? | 2013-03-01 A | 2013-03-01 A |  | 100% |  | 2013-03-01 | 2013-03-01 | 1d? |  |  | haoweihua | 8h | 8h |
| 56 | 7.1.2 | 接口设计、详细设计 |  | 2d? | 2013-03-04 A | 2013-03-05 A | 55 | 100% |  | 2013-03-04 | 2013-03-05 | 2d? |  |  | haoweihua | 16h | 16h |
| 57 | 7.1.3 | 服务端代码实现 |  | 3d? | 2013-03-06 A | 2013-03-08 A | 56 | 100% |  | 2013-03-06 | 2013-03-08 | 3d? |  |  | haoweihua | 24h | 24h |
| 58 | 7.1.4 | 测试代码及单元测试 |  | 2d? | 2013-03-11 A | 2013-03-12 | 57 | 80% | 0.4d? | 2013-03-11 | 2013-03-12 | 2d? | 78d | 0d | haoweihua | 16h | 12.8h |
| 59 | 7.1.5 | QA模块测试 |  | 1d? | 2013-03-13 | 2013-03-13 | 58 |  |  | 2013-03-13 | 2013-03-13 | 1d? | 78d | 0d | miaojun | 8h |  |
| 60 | 7.1.6 | BUG修改 |  | 1d? | 2013-03-13 | 2013-03-13 | 58 |  |  | 2013-03-13 | 2013-03-13 | 1d? | 78d | 0d | haoweihua | 8h |  |
| 61 | 7.1.7 | 提交集成 | milestone | 0d | 2013-03-13 | 2013-03-13 | 60, 59 |  |  | 2013-03-13 | 2013-03-13 | 0d | 78d |  | haoweihua |  |  |
| 62 | 7.2 | **消息管理模块** |  | 48d? | 2013-03-01 A | 2013-05-07 |  | 47% | 25.6d? | 2013-03-01 | 2013-03-18 | 12d? | 39d |  |  | 120h | 56h |
| 63 | 7.2.1 | 需求设计 |  | 1d? | 2013-03-01 A | 2013-04-05 A |  | 100% |  | 2013-03-01 | 2013-03-01 | 1d? |  |  | liujunbo | 8h | 8h |
| 64 | 7.2.2 | 管理终端UI设计 |  | 1d? | 2013-04-08 A | 2013-04-08 A | 63 | 100% |  | 2013-03-04 | 2013-03-04 | 1d? |  |  | liujunbo | 8h | 8h |
| 65 | 7.2.3 | 接口设计、详细设计 |  | 5d? | 2013-03-05 A | 2013-04-26 A | 64 | 100% |  | 2013-03-05 | 2013-03-07 | 3d? |  |  | yangguiming | 40h | 40h |
| 66 | 7.2.4 | 服务端/管理终端代码实现及单元测试 |  | 6d? | 2013-04-29 | 2013-05-06 | 65 |  |  | 2013-03-08 | 2013-03-15 | 6d? | 39d | 0d | yangguiming | 48h |  |
| 67 | 7.2.5 | QA模块测试 |  | 1d? | 2013-05-07 | 2013-05-07 | 66 |  |  | 2013-03-18 | 2013-03-18 | 1d? | 39d | 0d | miaojun | 8h |  |
| 68 | 7.2.6 | BUG修改 |  | 1d? | 2013-05-07 | 2013-05-07 | 66 |  |  | 2013-03-18 | 2013-03-18 | 1d? | 39d | 0d | yangguiming | 8h |  |
| 69 | 7.2.7 | 提交集成 | milestone | 0d | 2013-05-07 | 2013-05-07 | 68, 67 |  |  | 2013-03-18 | 2013-03-18 | 0d | 39d |  | yangguiming |  |  |
| 70 | 8 | **交易管理** |  | 87d? | 2013-03-01 A | 2013-07-01 |  | 66% | 29.41d? | 2013-03-01 | 2013-04-05 | 25.5d? | 0d |  |  | 1248h | 832.8h |
| 71 | 8.1 | **交易数据管理模块(含品种、合约、费率、资金、持仓、报单、行情等)** |  | 50d? | 2013-03-01 A | 2013-05-09 |  | 60% | 19.8d? | 2013-03-01 | 2013-04-03 | 23.5d? | 37d |  |  | 200h | 120.8h |
| 72 | 8.1.1 | 需求设计 |  | 3d? | 2013-03-01 A | 2013-04-11 A |  | 100% |  | 2013-03-01 | 2013-03-06 | 4d? |  |  | liujunbo | 24h | 24h |
| 73 | 8.1.2 | 接口设计、详细设计 |  | 5d? | 2013-04-15 A | 2013-04-19 | 72 | 90% | 0.5d? | 2013-03-08 | 2013-03-14 | 5d? | 44.6d | 0d | haoweihua | 40h | 36h |
| 74 | 8.1.3 | 服务端代码实现 |  | 8d? | 2013-04-22 A | 2013-05-01 | 73 | 80% | 1.6d? | 2013-03-15 | 2013-03-26 | 7.5d? | 38.2d | 0d | haoweihua | 64h | 51.2h |
| 75 | 8.1.4 | 测试代码实现及单元测试 |  | 3d? | 2013-05-02 A | 2013-05-06 | 74 | 40% | 1.8d? | 2013-03-26 | 2013-03-29 | 3d? | 37d | 0d | haoweihua | 24h | 9.6h |
| 76 | 8.1.5 | QA模块测试 |  | 3d? | 2013-05-07 | 2013-05-09 | 75 |  |  | 2013-03-29 | 2013-04-03 | 3d? | 37d | 0d | miaojun | 24h |  |
| 77 | 8.1.6 | Bug修改 |  | 3d? | 2013-05-07 | 2013-05-09 | 75 |  |  | 2013-03-29 | 2013-04-03 | 3d? | 37d | 0d | haoweihua | 24h |  |
| 78 | 8.1.7 | 提交集成 | milestone | 0d | 2013-05-09 | 2013-05-09 | 77, 76 |  |  | 2013-04-03 | 2013-04-03 | 0d | 37d |  | haoweihua |  |  |

| ID | WBS | Task | Type | Duration | Start | Finish | Predecessors | Complete | Remaining | Baseline start | Baseline finish | Baseline duration | Total slack | Free slack | Constraint | Resources | Work | Actual work |
| --- | --- | --- | --- | --- | --- | --- | --- | --- | --- | --- | --- | --- | --- | --- | --- | --- | --- | --- |
| 79 | 8.2 | **报盘模块(含行情报盘和ctp交易报盘)** |  | 86d? | 2013-03-01 A | 2013-06-28 |  | 88% | 10.43d? | 2013-03-01 | 2013-04-01 | 21.5d? | 1d |  |  |  | 544h | 478h |
| 80 | 8.2.1 | 需求设计 |  | 2d? | 2013-03-01 A | 2013-04-10 |  | 25% | 1.5d? | 2013-03-01 | 2013-03-01 | 1d? | 57.75d | 0d |  | liujunbo; haoweihua | 16h | 4h |
| 81 | 8.2.2 | 接口设计、详细设计 |  | 5d? | 2013-04-08 A | 2013-04-12 | 80 | 85% | 0.75d? | 2013-03-04 | 2013-03-08 | 5d? | 56d |  |  | haoweihua | 40h | 34h |
| 82 | 8.2.3 | 服务端代码实现 |  | 55d? | 2013-04-15 A | 2013-06-28 A | 81 | 100% |  | 2013-03-11 | 2013-03-20 | 7.5d? |  |  |  | caiguosen | 440h | 440h |
| 83 | 8.2.4 | QA模块测试 |  | 3d? | 2013-03-01 | 2013-03-05 |  |  |  | 2013-03-27 | 2013-04-01 | 3d? | 84d | 0d |  | miaojun | 24h |  |
| 84 | 8.2.5 | BUG修复 |  | 3d? | 2013-03-01 | 2013-03-05 |  |  |  | 2013-03-27 | 2013-04-01 | 3d? | 84d | 0d |  | caiguosen | 24h |  |
| 85 | 8.2.6 | 提交集成 | milestone | 0d | 2013-03-05 | 2013-03-05 | 84, 83 |  |  | 2013-04-01 | 2013-04-01 | 0d | 84d |  |  | caiguosen |  |  |
| 86 | 8.3 | **交易执行模块(含交易执行、基础风控、禁止下单、手工审核、审核队列等)** |  | 47d? | 2013-03-01 A | 2013-05-06 |  | 26% | 34.59d? | 2013-03-01 | 2013-03-22 | 16d? | 40d |  |  |  | 152h | 46.8h |
| 87 | 8.3.1 | 需求设计 |  | 2d? | 2013-03-01 A | 2013-04-15 |  | 50% | 1d? | 2013-03-01 | 2013-03-01 | 1d? | 0d |  |  | liujunbo; haoweihua | 16h | 8h |
| 88 | 8.3.2 | 接口设计、详细设计 |  | 5d? | 2013-04-16 A | 2013-04-22 | 87 | 33% | 3.33d? | 2013-03-04 | 2013-03-08 | 5d? | 42.35d | 0d |  | wanhuabo; haoweihua [50%] | 40h | 20h |
| 89 | 8.3.3 | 代码实现 |  | 5d? | 2013-04-23 A | 2013-04-29 | 88 | 35% | 3.25d? | 2013-03-11 | 2013-03-15 | 5d? | 40.6d | 0d |  | wanhuabo [50%]; haoweihua [50%] | 40h | 14h |
| 90 | 8.3.4 | 测试代码实现及单元测试 |  | 3d? | 2013-04-30 A | 2013-05-02 | 89 | 20% | 2.4d? | 2013-03-18 | 2013-03-20 | 3d? | 40d | 0d |  | haoweihua | 24h | 4.8h |
| 91 | 8.3.5 | QA模块测试 |  | 2d? | 2013-05-03 | 2013-05-06 | 90 |  |  | 2013-03-21 | 2013-03-22 | 2d? | 40d | 0d |  | miaojun | 16h |  |
| 92 | 8.3.6 | BUG修复 |  | 2d? | 2013-05-03 | 2013-05-06 | 90 |  |  | 2013-03-21 | 2013-03-22 | 2d? | 40d | 0d |  | haoweihua | 16h |  |
| 93 | 8.3.7 | 提交集成 | milestone | 0d | 2013-05-06 | 2013-05-06 | 92, 91 |  |  | 2013-03-22 | 2013-03-22 | 0d | 40d |  |  | haoweihua |  |  |
| 94 | 8.4 | **结算模块** |  | 63d? | 2013-03-01 A | 2013-05-28 |  | 51% | 30.85d? | 2013-03-01 | 2013-04-05 | 25.5d? | 24d |  |  |  | 272h | 138.8h |
| 95 | 8.4.1 | 需求设计 |  | 3d? | 2013-03-01 A | 2013-04-18 A |  | 100% |  | 2013-03-01 | 2013-03-05 | 3d? |  |  |  | liujunbo | 24h | 24h |
| 96 | 8.4.2 | 管理终端UI设计 |  | 2d? | 2013-04-19 A | 2013-04-22 A | 95 | 100% |  | 2013-03-06 | 2013-03-07 | 2d? |  |  |  | liujunbo | 16h | 16h |
| 97 | 8.4.3 | 接口设计、详细设计 |  | 10d? | 2013-04-23 | 2013-05-06 | 96 |  |  | 2013-03-08 | 2013-03-14 | 5d? | 36.35d | 0d |  | qiuying | 80h |  |
| 98 | 8.4.4 | 服务端/管理终端代码实现及单元测试 |  | 13d? | 2013-05-07 A | 2013-05-23 | 97 | 95% | 0.65d? | 2013-03-15 | 2013-04-02 | 12.5d? | 24d | 0d |  | qiuying | 104h | 98.8h |
| 99 | 8.4.5 | QA模块测试 |  | 3d? | 2013-05-24 | 2013-05-28 | 98 |  |  | 2013-04-02 | 2013-04-05 | 3d? | 24d | 0d |  | miaojun | 24h |  |
| 100 | 8.4.6 | BUG修复 |  | 3d? | 2013-05-24 | 2013-05-28 | 98 |  |  | 2013-04-02 | 2013-04-05 | 3d? | 24d | 0d |  | qiuying | 24h |  |
| 101 | 8.4.7 | 提交集成 | milestone | 0d | 2013-05-28 | 2013-05-28 | 100, 99 |  |  | 2013-04-05 | 2013-04-05 | 0d | 24d |  |  | qiuying |  |  |
| 102 | 8.5 | **行情服务器** |  | 10d? | 2013-06-18 A | 2013-07-01 |  | 60% | 3.95d? |  |  |  | 0d |  |  |  | 80h | 48.4h |
| 103 | 8.5.1 | 需求设计 |  | 0.5d? | 2013-06-18 | 2013-06-18 |  |  |  |  |  |  | 0d |  | must start on 2013-06-18 | liujunbo | 4h |  |
| 104 | 8.5.2 | 接口设计、详细设计 |  | 1d? | 2013-06-18 A | 2013-06-19 A | 103 | 100% |  |  |  |  |  |  |  | wuziyuan | 8h | 8h |
| 105 | 8.5.3 | 代码实现 |  | 4.5d? | 2013-06-19 A | 2013-06-25 | 104 | 90% | 0.45d? |  |  |  | 1d | 0d |  | wuziyuan | 36h | 32.4h |
| 106 | 8.5.4 | 测试代码实现及单元测试 |  | 2d? | 2013-06-26 A | 2013-06-27 | 105 | 50% | 1d? |  |  |  | 0d |  |  | wuziyuan | 16h | 8h |
| 107 | 8.5.5 | QA模块测试 |  | 1d? | 2013-06-28 | 2013-06-28 | 106 |  |  |  |  |  | 0d |  |  | miaojun | 8h |  |
| 108 | 8.5.6 | BUG修复 |  | 1d? | 2013-07-01 | 2013-07-01 | 107 |  |  |  |  |  | 0d |  |  | wuziyuan | 8h |  |
| 109 | 8.5.7 | 提交集成 | milestone | 0d? | 2013-07-01 | 2013-07-01 | 107, 108 |  |  |  |  |  | 0d |  |  | wuziyuan |  |  |

| ID | WBS | Task | Type | Duration | Start | Finish | Predecessors | Complete | Remaining | Baseline start | Baseline finish | Baseline duration | Total slack | Free slack | Resources | Work | Actual work |
| --- | --- | --- | --- | --- | --- | --- | --- | --- | --- | --- | --- | --- | --- | --- | --- | --- | --- |
| 110 | 9 | **扩展业务** |  | 63d? | 2013-03-01 A | 2013-05-28 |  | 17% | 52.38d? | 2013-03-01 | 2013-04-15 | 32d? | 24d |  |  | 712h | 112h |
| 111 | 9.1 | **风控业务** |  | 62d? | 2013-03-01 A | 2013-05-27 |  | 12% | 54.79d? | 2013-03-01 | 2013-04-01 | 22d? | 25d |  |  | 336h | 40h |
| 112 | 9.1.1 | 需求设计 |  | 3d? | 2013-03-01 A | 2013-04-19 A |  | 100% |  | 2013-03-01 | 2013-03-05 | 3d? |  |  | liujunbo | 24h | 24h |
| 113 | 9.1.2 | 风控终端UI设计 |  | 2d? | 2013-04-22 A | 2013-04-23 A | 112 | 100% |  | 2013-03-06 | 2013-03-07 | 2d? |  |  | liujunbo | 16h | 16h |
| 114 | 9.1.3 | 接口设计、详细设计 : A.服务端/风控终端框架 |  | 3d? | 2013-04-24 | 2013-04-26 | 113 |  |  | 2013-03-08 | 2013-03-12 | 3d? | 25d | 0d | caiguosen | 24h |  |
| 115 | 9.1.4 | 接口设计、详细设计 : B.风控方案(市场冲击风险、限亏、持仓风险敞口、保证金比例、品种持仓限制、基金净值) 服务端/风控终端 |  | 3d? | 2013-04-29 | 2013-05-01 | 114 |  |  |  |  |  | 25d | 0d | caiguosen | 24h |  |
| 116 | 9.1.5 | 接口设计、详细设计 : C.风控方案(止盈止损、持仓时间、总亏损额) 服务端/风控终端 |  | 3d? | 2013-05-02 | 2013-05-06 | 115 |  |  |  |  |  | 25d | 0d | yangguiming | 24h |  |
| 117 | 9.1.6 | 接口设计、详细设计 : D.手工审核风控终端 |  | 3d? | 2013-05-07 | 2013-05-09 | 116 |  |  |  |  |  | 25d | 0d | yangguiming | 24h |  |
| 118 | 9.1.7 | 代码实现及单元测试 : A.服务端/风控终端框架 |  | 4d? | 2013-05-10 | 2013-05-15 | 117 |  |  | 2013-03-13 | 2013-03-18 | 4d? | 25d | 0d | caiguosen | 32h |  |
| 119 | 9.1.8 | 代码实现及单元测试 : B.风控方案(市场冲击风险、限亏、持仓风险敞口、保证金比例、品种持仓限制、基金净值) 服务端/风控终端 |  | 3d? | 2013-05-16 | 2013-05-20 | 118 |  |  | 2013-03-19 | 2013-03-21 | 3d? | 25d | 0d | caiguosen | 24h |  |
| 120 | 9.1.9 | 代码实现及单元测试 : C.风控方案(止盈止损、持仓时间、总亏损额) 服务端/风控终端 |  | 3d? | 2013-05-16 | 2013-05-20 | 118 |  |  | 2013-03-22 | 2013-03-26 | 3d? | 25d | 0d | yangguiming | 24h |  |
| 121 | 9.1.10 | 代码实现及单元测试 : D.手工审核风控终端 |  | 3d? | 2013-05-16 | 2013-05-20 | 118 |  |  | 2013-03-27 | 2013-03-28 | 2d? | 30d |  | yangguiming | 24h |  |
| 122 | 9.1.11 | QA模块测试 |  | 5d? | 2013-05-21 | 2013-05-27 | 114, 118, 119, 120 |  |  | 2013-03-27 | 2013-04-01 | 4d? | 25d |  | miaojun [80%] | 32h |  |
| 123 | 9.1.12 | BUG修复 : A.主框架 |  | 2d? | 2013-05-21 | 2013-05-22 | 114, 118, 119, 120 |  |  | 2013-03-27 | 2013-03-27 | 1d? | 28d | 0d | caiguosen | 16h |  |
| 124 | 9.1.13 | BUG修复 : B.风控方案 |  | 2d? | 2013-05-21 | 2013-05-22 | 114, 118, 119, 120 |  |  | 2013-03-27 | 2013-03-27 | 1d? | 28d | 0d | caiguosen | 16h |  |
| 125 | 9.1.14 | BUG修复 : C.风控方案 |  | 2d? | 2013-05-21 | 2013-05-22 | 114, 118, 119, 120 |  |  | 2013-03-27 | 2013-03-27 | 1d? | 28d | 0d | yangguiming | 16h |  |
| 126 | 9.1.15 | BUG修复 : D.手工审核终端 |  | 2d? | 2013-05-21 | 2013-05-22 | 114, 118, 119, 120 |  |  | 2013-03-27 | 2013-03-27 | 1d? | 28d | 0d | yangguiming | 16h |  |
| 127 | 9.1.16 | 提交集成 | milestone | 0d | 2013-05-22 | 2013-05-22 | 126, 123, 124, 125 |  |  | 2013-03-27 | 2013-03-27 | 0d | 28d |  | caiguosen |  |  |
| 128 | 9.2 | **统计展现业务** |  | 63d? | 2013-03-01 A | 2013-05-28 |  | 7% | 58.5d? | 2013-03-01 | 2013-04-15 | 32d? | 24d |  |  | 296h | 20h |
| 129 | 9.2.1 | 需求设计 |  | 3d? | 2013-03-01 A | 2013-04-19 |  | 83% | 0.5d? | 2013-03-01 | 2013-03-07 | 5d? | 24d | 0d | liujunbo [500%] | 40h | 20h |
| 130 | 9.2.2 | 展现终端UI设计 |  | 5d? | 2013-04-22 | 2013-04-26 | 129 |  |  | 2013-03-08 | 2013-03-14 | 5d? | 24d | 0d | liujunbo | 40h |  |
| 131 | 9.2.3 | 接口设计、详细设计 |  | 5d? | 2013-04-29 | 2013-05-03 | 130 |  |  | 2013-03-15 | 2013-03-21 | 5d? | 24d | 0d | haoweihua | 40h |  |
| 132 | 9.2.4 | A.服务端/展现终端框架代码实现及单元测试 |  | 3d? | 2013-05-06 | 2013-05-08 | 131 |  |  | 2013-03-22 | 2013-03-26 | 3d? | 24d | 0d | haoweihua | 24h |  |
| 133 | 9.2.5 | B.服务端/展现终端业务代码实现及单元测试 |  | 10d? | 2013-05-09 | 2013-05-22 | 132 |  |  | 2013-03-27 | 2013-04-09 | 10d? | 24d | 0d | haoweihua | 80h |  |
| 134 | 9.2.6 | QA模块测试 |  | 4d? | 2013-05-23 | 2013-05-28 | 133 |  |  | 2013-04-10 | 2013-04-15 | 4d? | 24d | 0d | miaojun | 32h |  |
| 135 | 9.2.7 | A.主框架BUG修复 |  | 1d? | 2013-05-23 | 2013-05-23 | 133 |  |  | 2013-04-10 | 2013-04-10 | 1d? | 27d | 3d | haoweihua | 8h |  |
| 136 | 9.2.8 | B.业务BUG修复 |  | 4d? | 2013-05-23 | 2013-05-28 | 133 |  |  | 2013-04-10 | 2013-04-15 | 4d? | 24d | 0d | haoweihua | 32h |  |
| 137 | 9.2.9 | 提交集成 | milestone | 0d | 2013-05-28 | 2013-05-28 | 136, 134, 135 |  |  | 2013-04-15 | 2013-04-15 | 0d | 24d |  | haoweihua |  |  |

| ID | WBS | Task | Type | Duration | Start | Finish | Predecessors | Complete | Remaining | Baseline start | Baseline finish | Baseline duration | Total slack | Free slack | Constraint | Resources | Work | Actual work |
| --- | --- | --- | --- | --- | --- | --- | --- | --- | --- | --- | --- | --- | --- | --- | --- | --- | --- | --- |
| 138 | 9.3 | **第三方交易指示处理模块** |  | 46d? | 2013-03-01 A | 2013-05-03 |  | 68% | 14.64d? |  |  |  | 41d |  |  |  | 80h | 52h |
| 139 | 9.3.1 | 需求设计 |  | 2d? | 2013-03-01 A | 2013-05-02 A |  | 100% |  |  |  |  |  |  |  | liujunbo | 8h | 8h |
| 140 | 9.3.2 | 接口设计、详细设计 |  | 4d? | 2013-04-23 A | 2013-04-26 A | 139 | 100% |  |  |  |  |  |  | start no earlier than 2013-04-23 | yangguiming | 32h | 32h |
| 141 | 9.3.3 | 代码实现、测试代码实现及单元测试 |  | 3d? | 2013-04-29 A | 2013-05-01 | 140 | 50% | 1.5d? |  |  |  | 41d | 0d |  | yangguiming | 24h | 12h |
| 142 | 9.3.4 | QA模块测试 |  | 1d? | 2013-05-02 | 2013-05-02 | 141 |  |  |  |  |  | 41d | 0d |  | miaojun | 8h |  |
| 143 | 9.3.5 | BUG修复 |  | 1d? | 2013-05-03 | 2013-05-03 | 142 |  |  |  |  |  | 41d | 0d |  | yangguiming | 8h |  |
| 144 | 9.3.6 | 提交集成 | milestone | 0d | 2013-05-03 | 2013-05-03 | 143 |  |  |  |  |  | 48d |  |  | yangguiming |  |  |
| 145 | 10 | **交易终端** |  | 63d | 2013-03-01 A | 2013-05-28 |  | 59% | 25.59d | 2013-03-01 | 2013-04-15 | 32d | 24d |  |  |  | 256h | 152h |
| 146 | 10.1 | **交易终端** |  | 63d | 2013-03-01 A | 2013-05-28 |  | 59% | 25.59d | 2013-03-01 | 2013-04-15 | 32d | 24d |  |  |  | 256h | 152h |
| 147 | 10.1.1 | 需求设计 |  | 2d | 2013-03-01 A | 2013-04-16 A |  | 100% |  | 2013-03-01 | 2013-03-04 | 2d |  |  |  | liujunbo | 16h | 16h |
| 148 | 10.1.2 | 接口设计、详细设计 |  | 5d | 2013-04-17 A | 2013-04-23 A | 147 | 100% |  | 2013-03-05 | 2013-03-11 | 5d |  |  |  | yangguiming | 40h | 40h |
| 149 | 10.1.3 | 代码实现及单元测试 |  | 15d | 2013-04-24 A | 2013-05-14 | 148 | 80% | 3d | 2013-03-12 | 2013-04-01 | 15d | 24d | 0d |  | yangguiming | 120h | 96h |
| 150 | 10.1.4 | QA模块测试 |  | 5d | 2013-05-15 | 2013-05-21 | 149 |  |  | 2013-04-02 | 2013-04-08 | 5d | 24d | 0d |  | miaojun | 40h |  |
| 151 | 10.1.5 | Bug修改 |  | 5d | 2013-05-22 | 2013-05-28 | 150 |  |  | 2013-04-09 | 2013-04-15 | 5d | 24d | 0d |  | yangguiming | 40h |  |
| 152 | 10.1.6 | 提交集成 | milestone | 0d | 2013-05-28 | 2013-05-28 | 151 |  |  | 2013-04-15 | 2013-04-15 | 0d | 24d |  |  | yangguiming |  |  |
| 153 | 11 | **集成、性能及压力测试** |  | 30d | 2013-07-02 | 2013-08-12 |  |  |  | 2013-04-16 | 2013-05-27 | 30d | 0d |  |  |  | 240h |  |
| 154 | 11.1 | 集成测试 |  | 20d | 2013-07-02 | 2013-07-29 | 5, 18, 53, 70, 110, 145 |  |  | 2013-04-16 | 2013-05-13 | 20d | 0d |  |  | liujunbo [50%]; miaojun [50%] | 160h |  |
| 155 | 11.2 | 性能及压力测试 |  | 10d | 2013-07-30 | 2013-08-12 | 154 |  |  | 2013-05-14 | 2013-05-27 | 10d | 0d |  |  | liujunbo [50%]; miaojun [50%] | 80h |  |
| 156 | 12 | **验收测试** |  | 25d? | 2013-08-13 | 2013-09-16 |  |  |  | 2013-05-28 | 2013-07-01 | 25d? | 0d |  |  |  | 120h |  |
| 157 | 12.1 | α测试 |  | 5d? | 2013-08-13 | 2013-08-19 | 155 |  |  | 2013-05-28 | 2013-06-03 | 5d? | 0d |  |  | liujunbo [50%]; miaojun [50%] | 40h |  |
| 158 | 12.2 | β测试 |  | 20d? | 2013-08-20 | 2013-09-16 | 157 |  |  | 2013-06-04 | 2013-07-01 | 20d? | 0d |  |  | liujunbo [25%]; miaojun [25%] | 80h |  |
| 159 | 13 | 正式发布 | milestone | 0d | 2013-09-16 | 2013-09-16 | 156 |  |  | 2013-07-01 | 2013-07-01 | 0d | 0d |  |  |  |  |  |
