# MarketMaker

Schedule from MS Project, 2014-02-07 to 2014-12-01, A marks actual dates.
Lenovo (Beijing) Limited

## Calendars

- 标准: Mon-Fri 08:00-12:00, 13:00-17:00; Sat-Sun off.

## Resources

| Resource |
| --- |
| wanhuabo |
| wuziyuan |
| haoweihua |
| liujunbo |
| miaojun |
| yangguiming |
| caiguosen |
| qiuying |
| qiuying;wuziyuan |
| qiuying(90%);wuziyuan(10%) |

## Schedule

| ID | WBS | Task | Type | Duration | Start | Finish | Predecessors | Complete | Remaining | Total slack | Free slack | Constraint | Resources | Work |
| --- | --- | --- | --- | --- | --- | --- | --- | --- | --- | --- | --- | --- | --- | --- |
| 1 | 1 | **机构版系统扩展-期权做市商** |  | 212d? | 2014-02-07 A | 2014-12-01 |  |  | 212d? | 0d |  |  |  | 2444h |
| 2 | 1.1 | 整体需求分析 |  | 5d | 2014-02-07 | 2014-02-13 |  |  |  | 207d |  |  |  | 40h |
| 3 | 1.2 | **服务端公共模块** |  | 0d | 2014-02-07 A | 2014-02-07 A |  | 100% |  |  |  |  |  |  |
| 4 | 1.2.1 | 通知和问询模块-主从扩展 | milestone | 0d | 2014-02-07 A | 2014-02-07 A |  | 100% |  |  |  |  |  |  |
| 5 | 1.3 | **基础数据模块** |  | 8d | 2014-02-18 | 2014-02-27 |  |  |  | 197d |  |  |  | 108h |
| 6 | 1.3.1 | 基础数据管理-主交易账号、经纪公司、服务器组、服务器-主从扩展 |  | 5d | 2014-02-18 | 2014-02-24 |  |  |  | 135.5d | 0d | start no earlier than 2014-02-18 | wuziyuan | 40h |
| 7 | 1.3.2 | 基础数据管理-用户、组织机构、角色、权限-主从扩展 |  | 3d | 2014-02-25 | 2014-02-27 | 6 |  |  | 135.5d |  | finish no earlier than 2014-02-27 | wuziyuan [116.7%] | 28h |
| 8 | 1.3.3 | 基础数据管理-第三方交易限制-主从扩展 |  | 3d | 2014-02-25 | 2014-02-27 | 6 |  |  | 135.5d |  |  | wuziyuan [83.3%] | 20h |
| 9 | 1.3.4 | 基础数据管理-理财产品-主从扩展 |  | 3d | 2014-02-25 | 2014-02-27 | 6 |  |  | 135.5d |  |  | wuziyuan [83.3%] | 20h |
| 10 | 1.4 | **登陆及消息管理** |  | 4d | 2014-02-18 | 2014-02-21 |  |  |  | 201d |  |  |  | 52h |
| 11 | 1.4.1 | 登陆模块-主从扩展 |  | 4d | 2014-02-18 | 2014-02-21 |  |  |  | 139.5d |  | finish no earlier than 2014-02-21 | haoweihua | 32h |
| 12 | 1.4.2 | 消息管理模块-主从扩展 |  | 4d | 2014-02-18 | 2014-02-21 |  |  |  | 139.5d |  | finish no earlier than 2014-02-21 | yangguiming [62.5%] | 20h |
| 13 | 1.5 | **交易服务** |  | 196d? | 2014-02-07 | 2014-11-07 |  |  |  | 16d |  |  |  | 436h |
| 14 | 1.5.1 | 交易数据管理-主从扩展 |  | 4d? | 2014-02-21 | 2014-02-26 |  |  |  | 136.5d |  | finish no earlier than 2014-02-26 | haoweihua [175%] | 56h |
| 15 | 1.5.2 | 交易数据管理-套利扩展-延后 |  | 1d? | 2014-02-07 | 2014-02-07 |  |  |  | 59d |  |  |  |  |
| 16 | 1.5.3 | 交易数据管理-期权扩展 |  | 1d? | 2014-02-07 | 2014-02-07 |  |  |  | 59d |  |  |  |  |
| 17 | 1.5.4 | 报盘管理-增加查询主账号资金、持仓、持仓明细 |  | 2d | 2014-02-25 | 2014-02-26 |  |  |  | 136.5d |  | start no earlier than 2014-02-25 | caiguosen | 16h |
| 18 | 1.5.5 | 报盘管理-期权扩展 |  | 1d? | 2014-02-07 | 2014-02-07 |  |  |  | 59d |  |  |  |  |
| 19 | 1.5.6 | 报盘管理-套利扩展-延后 |  | 1d? | 2014-02-07 | 2014-02-07 |  |  |  | 59d |  |  |  |  |
| 20 | 1.5.7 | 交易执行及管理-处理tcp接口过来的交易指令 |  | 6d? | 2014-02-21 | 2014-02-28 |  |  |  | 134.5d |  | finish no earlier than 2014-02-28 | haoweihua [50%] | 24h |
| 21 | 1.5.8 | 交易执行及管理-期权扩展 |  | 1d? | 2014-02-07 | 2014-02-07 |  |  |  | 59d |  |  |  |  |
| 22 | 1.5.9 | 结算服务-套利扩展-延后 |  | 1d? | 2014-02-07 | 2014-02-07 |  |  |  | 59d |  |  |  |  |
| 23 | 1.5.10 | 结算服务-期权扩展-暂无 |  | 1d? | 2014-02-07 | 2014-02-07 |  |  |  | 59d |  |  |  |  |
| 24 | 1.5.11 | **行情服务** |  | 189d? | 2014-02-18 | 2014-11-07 |  |  |  | 16d |  |  |  | 340h |
| 25 | 1.5.11.1 | 行情服务器-模拟行情扩展 |  | 9d? | 2014-02-18 | 2014-02-28 |  |  |  | 196d |  | finish no earlier than 2014-02-28 | wuziyuan [55.6%] | 40h |
| 26 | 1.5.11.2 | 行情服务器-K线查询、实时行情扩展 |  | 6.25d | 2014-07-17 | 2014-07-25 |  |  |  | 91.75d |  | start no earlier than 2014-07-17 | qiuying(90%);wuziyuan(10%) [240%] | 120h |
| 27 | 1.5.11.3 | 行情服务器-K线跨日查询扩展 |  | 7.5d | 2014-08-27 | 2014-09-05 |  |  |  | 61.5d |  | start no earlier than 2014-08-27 | qiuying | 60h |
| 28 | 1.5.11.4 | 行情服务器-联调 |  | 13d | 2014-10-08 | 2014-10-24 |  |  |  | 26d |  | start no earlier than 2014-10-08 | qiuying [15.4%] | 16h |
| 29 | 1.5.11.5 | 行情服务器-根据实时行情自动生成K线数据并入库，日内K线数据放内存中供查询 |  | 5d | 2014-11-03 | 2014-11-07 |  |  |  | 16d |  | start no earlier than 2014-11-03 | qiuying | 40h |
| 30 | 1.5.11.6 | 波动率计算及接口提供(代码及单元测试) |  | 5d | 2014-10-09 | 2014-10-15 |  |  |  | 33d |  | start no earlier than 2014-10-09 | qiuying | 40h |
| 31 | 1.5.11.7 | 波动率计算及接口联调 |  | 10d? | 2014-10-13 | 2014-10-24 |  |  |  | 26d |  | start no earlier than 2014-10-13 | qiuying [30%] | 24h |

Notes:
- 4: 1. 问询不进行主从同步，只对本服务器有效 / 2. 通知需要主从同步，广播给其它服务器。
- 6: 1. 增加配置项，指定Master/Slave运行模式 / 2. Slave模式： / 1) 启动后通过TCP连接并登陆交易服务。如果TCP连接中断，则重连并重新初始化数据/ 2) 初始化时向交易服务请求全部数据 / 3) 初始化后，收到交易服务推送的数据修改指令，修改自身数据。修改时不用发起问询 / 3. Master模式： / 1) 启动后从数据库加载数据 / 2) 收到Slave发来的全部数据请求时，将全部数据打包，一次性发给Slave/ 3) 每次自身数据完成更改时，从登陆模块取所有Slave的Session，将数据更改指令转发过去 / 4. 单元测试方法： / 1) Master：用系统管理终端登录交易服务，修改数据，验证数据正确性 / 2) Slave：用系统管理终端分别登录交易服务和风控服务，在登录交易服务的终端上修改数据，在登录风控服务的终端上验证数据是否同步更新。
- 7: 1. 增加配置项，指定Master/Slave运行模式 / 2. Slave模式： / 1) 启动后通过TCP连接并登陆交易服务。如果TCP连接中断，则重连并重新初始化数据/ 2) 初始化时向交易服务请求全部数据 / 3) 初始化后，收到交易服务推送的数据修改指令，修改自身数据。修改时不用发起问询 / 3. Master模式： / 1) 启动后从数据库加载数据 / 2) 收到Slave发来的全部数据请求时，将全部数据打包，一次性发给Slave/ 3) 每次自身数据完成更改时，从登陆模块取所有Slave的Session，将数据更改指令转发过去 / 4. 用户登陆状态信息订阅和推送 / 1) 去掉定时查询用户登陆状态的机制，改为1)打开窗口时查一次; 2)加一个查询登陆状态按钮，点击时查一遍 / 2) 系统管理终端和风控终端登陆后，向服务器订阅用户登陆状态信息 / 3) 系统管理终端和风控终端处理服务器响应并处理服务器端推送回来的所有用户的登录信息，如果当前打开了用户管理窗口，则正确更新窗口里的登录状态内容。(推送的信息包含用户ID、用户类型、用户登录状态等)/ 5. 单元测试方法： / 1) Master：用系统管理终端登录交易服务，修改数据，验证数据正确性 / 2) Slave：用系统管理终端分别登录交易服务和风控服务，在登录交易服务的终端上修改数据，在登录风控服务的终端上验证数据是否同步更新。
- 8: 1. 增加配置项，指定Master/Slave运行模式 / 2. Slave模式： / 1) 启动后通过TCP连接并登陆交易服务。如果TCP连接中断，则重连并重新初始化数据/ 2) 初始化时向交易服务请求全部数据 / 3) 初始化后，收到交易服务推送的数据修改指令，修改自身数据。修改时不用发起问询 / 3. Master模式： / 1) 启动后从数据库加载数据 / 2) 收到Slave发来的全部数据请求时，将全部数据打包，一次性发给Slave/ 3) 每次自身数据完成更改时，从登陆模块取所有Slave的Session，将数据更改指令转发过去 / 4. 单元测试方法： / 1) Master：用系统管理终端登录交易服务，修改数据，验证数据正确性 / 2) Slave：用系统管理终端分别登录交易服务和风控服务，在登录交易服务的终端上修改数据，在登录风控服务的终端上验证数据是否同步更新。
- 9: 1. 增加配置项，指定Master/Slave运行模式 / 2. Slave模式： / 1) 启动后通过TCP连接并登陆交易服务。如果TCP连接中断，则重连并重新初始化数据/ 2) 初始化时向交易服务请求全部数据 / 3) 初始化后，收到交易服务推送的数据修改指令，修改自身数据。修改时不用发起问询 / 3. Master模式： / 1) 启动后从数据库加载数据 / 2) 收到Slave发来的全部数据请求时，将全部数据打包，一次性发给Slave/ 3) 每次自身数据完成更改时，从登陆模块取所有Slave的Session，将数据更改指令转发过去 / 4. 单元测试方法： / 1) Master：用系统管理终端登录交易服务，修改数据，验证数据正确性 / 2) Slave：用系统管理终端分别登录交易服务和风控服务，在登录交易服务的终端上修改数据，在登录风控服务的终端上验证数据是否同步更新。
- 11: 1. 增加配置项，指定Master/Slave运行模式 / 2. 接收开始初始化和开始结算的通知消息，把管理终端以外的所有登录socket断掉 / 3. Master要处理Slave发起的登陆操作。Slave登录名和密码在配置文件中配置。所有Slave用同一个用户名登录。 / 4. 用户登陆状态信息订阅和推送： / 1)系统管理终端和风控终端登陆时，向服务器订阅用户登陆状态信息 / 2)服务器端收到订阅请求时，将当前所有用户的登陆状态信息发给终端 / 3)终端订阅后，当有用户的登陆状态信息改变时，服务器将该信息推送给终端 / 6. 服务器之间用户登陆状态信息同步 / 1)从服务器登陆主服务器后，从服务器向主服务器请求当前用户登陆状态数据/ 2)登陆成功后, 服务器将登陆信息保存在本模块map和SvrTcp(备通知模块使用)中, 同时将登陆事件通知整个系统 / 3)系统内所有服务器的SvrLogin收到用户登陆事件通知后，更新自身mmapUserOnlineCount，并推送给订阅了用户登陆事件的客户端，如系统管理终端和风控终端 / 4)服务器处理登出请求，和登陆一样处理 / 7. 基础数据改变的内部通知消息的处理： / 1)基础数据改变后，会向全系统发送通知。服务器收到通知后，推送给登陆自身的相应终端 / 8. 单元测试方法： / 1) 上述每个操作输入日志，通过日志信息验证是否正确 / 2) 结算时，检查各终端是否被踢掉，结算过程中是否不能登录 / 3) 在风控终端上查询交易终端是否在线能否成功
- 12: 1. 增加配置项，指定Master/Slave运行模式/ 2. Slave初始化查询/ 1) 初始化时向Master请求全部目标消息数据及接收者状态数据/ 3. Slave所在服务的模块需要发消息/ 1) Slave将原始消息数据转发给Master，由Master负责后续处理/ 4. Master发消息/ 1) 将自身服务需要发送的和Slave转发过来欲发送的原始消息，转换成目标消息数据和接收者状态数据，生成ID / 2) 将上述数据转发给所有Slave / 3) Master和Slave根据消息目的地，将消息发送给自身管理的接收者客户端/ 5. 消息接收状态的同步/ 1) Slave管理的接收者收到消息后，Slave将接收状态发送给Master，由Master负责后续处理/ 2) Master管理的接收者收到消息后，修改自身对应的消息状态/ 3) Master接收到Slave发送过来的状态修改消息后，修改自身对应的消息状态/ 4) Master将修改的消息状态发送给所有Slave / 6. Master负责原始消息、目标消息及消息状态落地/ 7. 单元测试方法：/ 1) 各终端发送消息，检查目的终端是否能收到/ 2) 风控自动发送消息，检查目的终端是否能收到/ 3) 终端上查询消息，看是否正确/ 4) 查询原始消息，看是否正确/ 5) 查询消息接收状态，看是否正确
- 14: 1. 增加配置项，指定Master/Slave运行模式 / 2. Slave模式： / 1) 启动后通过TCP连接并登陆交易服务。如果TCP连接中断，则重连并重新执行二阶段初始化数据过程 / 2) 一阶段初始化：从数据库请求所有日初数据和日内的成交、报单数据，并记录每个用户成交、报单已有数据的最大FTID值/ 3) 二阶段初始化：把所有用户的成交报单最大FTID值发给Master，请求当前增量数据和其它杂项数据。收到返回数据后，更新自身数据。 / 4) 初始化后，收到交易服务推送的数据修改指令，修改自身数据。修改时不用发起问询 / 5) 不执行数据落地 / 6) 系统运行状态改变时，给其它模块发送通知消息 / 3. Master模式： / 1) 启动后从数据库加载数据 / 2) 收到Slave发来的初始化数据请求时，将全部报单、成交增量数据和其它杂项全部数据打包，一次性发给Slave/ 3) 每次自身数据完成更改时，从登陆模块取所有Slave的Session，将数据更改指令转发过去 / 4) 数据落地：配置项里配置数据落地时间间隔，增量落地 / 5) 系统运行状态改变时，给其它模块发送通知消息 / 4. 单元测试方法： / 1) Master：启动交易服务，登录交易终端，进行各项交易，在交易终端上通过查询，验证交易数据正确性 / 2) Slave：用统计展现终端登录统计展现服务，在统计展现终端上验证数据是否同步更新。
- 15: 1. 支持套利数据管理 / 1) 组合合约交易对应的仓位、保证金、手续费计算 / 2. 单元测试方法： / 1) 启动交易服务，登录交易终端，进行各种组合合约交易，在交易终端上通过查询，验证交易数据正确性
- 16: 1. 支持期权交易数据管理 / 1) 期权合约仓位、保证金、权利金计算 / 2) 行权/履约时触发的仓位、保证金、权利金计算 / 3) 保存询价消息，并推送给交易终端和策略服务 / 2. 单元测试方法： / 1) 启动交易服务，登录交易终端，进行各种期权交易，在交易终端上通过查询，验证交易数据正确性
- 18: 1. 支持行权指令，支持询价通知
- 19: 1. 支持组合合约下单、撤单，组合持仓明细查询，组合持仓查询
- 20: 1. 接收并执行风控服务和策略服务通过网络发送过来的交易操作指令，包括下单、撤单、通过审核、风控结果 / 2. 单元测试： / 1) 通过风控服务和策略服务进行测试。
- 21: 1. 支持行权指令 / 2. 将询价消息推送给交易终端和策略服务 / 3. 将超过报单时效的报单撤掉 / 4. 单元测试： / 1) 通过交易终端测试行权。 / 2) 询价消息推送时写日志，通过日志验证询价消息推送是否正确
- 22: 1. 增加组合持仓和组合持仓明细确认，并保证组合持仓明细-持仓明细，组合持仓明细-组合持仓之间仓位数据的一致性 / 2. 暂不考虑大商结算时打散重组 / 3. 沿用盘中的组合持仓明细 / 4. 单元测试： / 1) 结算后检查数据库数据是否正确
- 23: 暂无
- 25: 1.行情落地按日建表 / 2. 配置中指定行情表保存时间，系统自动将此时间以前的表删除 / 3. 配置文件中指定实盘还是模拟 / 3. 如果配置为模拟系统，根据后台管理终端上配置所用行情时间段(可以跨天)回放行情/ 4. 如果配置为模拟系统，根据后台管理终端上配置行情回放方式，按时间回放/连续回放(不做时间延迟)回放行情/ 5. 后台管理终端与上述几条相关的修改 / 6. 单元测试： / 1) 配合交易终端测试 / 2) 检查数据库，看落地建表和自动删除是否正确
- 26: 1. 理解行情服务器代码(周四) / 2. SvrQuotServer.cpp中InitFunc() ： 从数据库中读经纪公司信息沿用，部署时配置相关数据库表。 / 3. 登录CTP，取所有合约并订阅行情：(周五) / 用PlatformCTPTrade.h/cpp，登录交易，查询所有合约。然后向ctp订阅所有合约的行情。 / InitFunc()中发起交易登录；在登录成功回执中查询合约；在查询合约回执中，将合约保存到instrument_yyyymmdd表中，同时向订阅ctp行情；收到最后一条合约后，清除交易连接 / 4. 用户登录验证：(周五) / 增加用户验证。用户发送CMDID_QuotSvr_Login, 附带用户名密码；服务器对其进行验证。合法用户密码保存在本地的account.xml里； / 返回CMDID_QuotSvr_LoginRtn, 表示验证成功/失败。如果验证成功，将socket加入set<SOCKET> m_ValidSockets中(PlatformCTPQuotImpl.h) / 当socket断开后，需要从m_ValidSockets中移出 / 5. 用户订阅行情(周五) / 用户发送Cmd_SubscribeQuot2_Req，服务器检查socket是否已验证，如未验证，则返回失败 / 如已经验证，按原有方式处理即可 / 行情推送按原有方式处理 / 6. 实时行情内部处理(周五) / 收到实时行情后，存入数据库(按原有方式即可)。 / 7. 计算当日K线数据：(周五让冯远涛协助，周一完成) / 通过存储过程，取当前时间分钟数，依据实时Tick数据表(AQUOTINFO_yyyymmdd)中的数据，计算K线数据，存入数据库表(KLINE1_yyyymm等)。(需计算1分钟、3分钟、5分钟、10分钟、15分钟、30分钟、60分钟周期的K线) / 配置Oracle数据库，实现每分钟定时调用上述存储过程 / K线表内容：时间、开、高、低、收四个价格、成交量增量。 / 8. 查询K线数据(周二) / 用户发送Cmd_QueryQuotKLineData_Req请求K线数据，指定合约、K线周期、时间段。 / 服务端检查socket是否已验证 / 当日数据从KLINE***表中查询，往日数据从历史数据库表查询。支持1/3/5/10/15/30/60分钟K线，以及日/周/月/年K线 / 线程池：开128线程。每个线程标记是否空闲。一个合法用户发起查询时 / 1）找一个空闲线程：如没有，返回失败，原因为忙。 / 2）标志为忙 / 3）用这个线程查DB，查完后，返回数据给用户。 / 4）标志为空闲 / 9. 撰写接口文档(周三) / 10.修订：收到行情订阅请求并返回订阅回报后，立即推送一条最后行情给客户端 / 11.修订：增加客户端行情退订接口 / 12.修订：生成K线和分时数据时，使用触发器代替定时器。当插入实时行情表时，触发针对对应合约的K线和分时线数据计算。 / 13.修订：实时行情表第一索引调整为合约ID，取消TradingDay的索引
- 27: 1. 实现跨日查询k线 / 1) 终端查询时指定开始时间和结束时间 / 2) 服务器设置查询最大数据量MaxQueryDataUnit，在配置参数中指定。 / 3) 服务器返回指定时间段的k线数据，最多MaxQueryDataUnit条数据。超出则截断。 / 2. K线数据中最后更新时间精确到秒 / 3. 增加日k线、周k线、月k线
- 28: 1. 配合冯远涛正确生成日内K线数据和历史K线数据。 / 2. 与KLine模块联调，通过接口提供正确的K线数据。
- 29: 1. 参考FastTrader中OptionQuation项目里FData.cpp的K线生成代码(SetInTimeData_KLine()及相关函数)，根据实时行情，生成系列K线数据并入库。 / 2. 启动时将日内K线数据加载到内存中，上一条生成的K线数据也保存在内存中，客户端查询日内K线数据时，直接读取内存数据
- 30: 1. 参考<期权交易终端需求.docx>, 每个合约收到当日结算价时，计算20日波动率和60日波动率，存入数据库中 / 2. 提供波动率查询接口
- 31: 和策略模块联调，保证计算结果和查询接口的正确性

| ID | WBS | Task | Type | Duration | Start | Finish | Predecessors | Baseline start | Baseline finish | Baseline duration | Total slack | Free slack | Constraint | Resources | Work |
| --- | --- | --- | --- | --- | --- | --- | --- | --- | --- | --- | --- | --- | --- | --- | --- |
| 32 | 1.6 | **风控服务一期(含基本风控指标)** |  | 205d | 2014-02-18 | 2014-12-01 |  |  |  |  | 0d |  |  |  | 304h |
| 33 | 1.6.1 | 风控服务器-把交易指令通过tcp接口发送给交易服务 |  | 4d | 2014-02-18 | 2014-02-21 |  | 2013-03-01 | 2013-04-01 | 22d? | 201d |  | start no earlier than 2014-02-18 | caiguosen [75%] | 24h |
| 34 | 1.6.2 | 风控服务器-根据资管风控要求进行扩展(开发、单元测试、接口文档) |  | 35d | 2014-10-14 | 2014-12-01 |  |  |  |  | 0d |  | start no earlier than 2014-10-14 | caiguosen | 280h |
| 35 | 1.7 | **风控服务二期(含定制风控指标)** |  | 1d? | 2014-02-07 | 2014-02-07 |  |  |  |  | 211d |  |  |  |  |
| 36 | 1.7.1 | **风控服务器** |  | 1d? | 2014-02-07 | 2014-02-07 |  | 2013-03-01 | 2013-04-01 | 22d? | 211d |  |  |  |  |
| 37 | 1.7.1.1 | 需求设计 |  | 1d? | 2014-02-07 | 2014-02-07 |  | 2013-03-01 | 2013-03-05 | 3d? | 211d |  |  |  |  |
| 38 | 1.7.1.2 | 接口设计、详细设计 : E.其它风控指标 |  | 1d? | 2014-02-07 | 2014-02-07 |  |  |  |  | 211d |  |  |  |  |
| 39 | 1.7.1.3 | 代码实现及单元测试 : E.其它风控指标 |  | 1d? | 2014-02-07 | 2014-02-07 |  | 2013-03-27 | 2013-03-28 | 2d? | 211d |  |  |  |  |
| 40 | 1.7.1.4 | QA模块测试 : E.其它风控指标 |  | 1d? | 2014-02-07 | 2014-02-07 |  | 2013-03-27 | 2013-04-01 | 4d? | 211d |  |  |  |  |
| 41 | 1.7.1.5 | BUG修复 : E.其它风控指标 |  | 1d? | 2014-02-07 | 2014-02-07 |  | 2013-03-27 | 2013-03-27 | 1d? | 211d |  |  |  |  |
| 42 | 1.7.1.6 | 提交集成 |  | 1d? | 2014-02-07 | 2014-02-07 |  | 2013-03-27 | 2013-03-27 | 0d | 211d |  |  |  |  |
| 43 | 1.7.2 | **风控终端终端** |  | 1d? | 2014-02-07 | 2014-02-07 |  | 2013-03-01 | 2013-04-01 | 22d? | 211d |  |  |  |  |
| 44 | 1.7.2.1 | 需求设计 |  | 1d? | 2014-02-07 | 2014-02-07 |  | 2013-03-01 | 2013-03-05 | 3d? | 211d |  |  |  |  |
| 45 | 1.7.2.2 | 接口设计、详细设计 |  | 1d? | 2014-02-07 | 2014-02-07 |  | 2013-03-08 | 2013-03-12 | 3d? | 211d |  |  |  |  |
| 46 | 1.7.2.3 | 代码实现及单元测试 |  | 1d? | 2014-02-07 | 2014-02-07 |  | 2013-03-13 | 2013-03-18 | 4d? | 211d |  |  |  |  |
| 47 | 1.7.2.4 | QA模块测试 |  | 1d? | 2014-02-07 | 2014-02-07 |  | 2013-03-27 | 2013-04-01 | 4d? | 211d |  |  |  |  |
| 48 | 1.7.2.5 | BUG修复 |  | 1d? | 2014-02-07 | 2014-02-07 |  | 2013-03-27 | 2013-03-27 | 1d? | 211d |  |  |  |  |
| 49 | 1.7.2.6 | 提交集成 |  | 1d? | 2014-02-07 | 2014-02-07 |  | 2013-03-27 | 2013-03-27 | 0d | 211d |  |  |  |  |
| 50 | 1.8 | **统计展现服务** |  | 1d? | 2014-02-07 | 2014-02-07 |  | 2013-03-01 | 2013-04-15 | 32d? | 211d |  |  |  |  |
| 51 | 1.8.1 | 统计展现业务-无 |  | 1d? | 2014-02-07 | 2014-02-07 |  | 2013-03-01 | 2013-04-15 | 32d? | 211d |  |  |  |  |
| 52 | 1.9 | **策略服务** |  | 86d? | 2014-02-07 | 2014-06-06 |  |  |  |  | 126d |  |  |  | 1496h |
| 53 | 1.9.1 | **策略服务器** |  | 40d? | 2014-02-07 | 2014-04-03 |  | 2013-03-01 | 2013-04-01 | 22d? | 172d |  |  |  | 296h |
| 54 | 1.9.1.1 | 需求设计 |  | 1d? | 2014-02-07 | 2014-02-07 |  | 2013-03-01 | 2013-03-05 | 3d? | 211d |  |  | liujunbo | 8h |
| 55 | 1.9.1.2 | 接口设计、详细设计 |  | 1d? | 2014-03-17 | 2014-03-17 |  | 2013-03-08 | 2013-03-12 | 3d? | 172d | 0d | start no earlier than 2014-03-17 | haoweihua | 8h |
| 56 | 1.9.1.3 | 策略加载、运行-代码实现及单元测试 |  | 10d? | 2014-03-18 | 2014-03-31 | 55 | 2013-03-13 | 2013-03-18 | 4d? | 110.5d | 0d | start no earlier than 2014-03-17 | wuziyuan | 80h |
| 57 | 1.9.1.4 | 服务主从扩展、Redis服务-代码实现及单元测试 |  | 10d? | 2014-03-18 | 2014-03-31 | 55 |  |  |  | 110.5d | 0d | start no earlier than 2014-03-17 | haoweihua [50%]; wuziyuan [50%] | 80h |
| 58 | 1.9.1.5 | 上传、下载、停用、启用-代码实现及单元测试 |  | 10d? | 2014-03-18 | 2014-03-31 | 55 |  |  |  | 110.5d | 0d |  | caiguosen | 80h |
| 59 | 1.9.1.6 | QA模块测试 |  | 2d? | 2014-04-01 | 2014-04-02 | 56, 57, 58 | 2013-03-27 | 2013-04-01 | 4d? | 111.5d | 1d |  | miaojun | 16h |
| 60 | 1.9.1.7 | BUG修复 |  | 3d? | 2014-04-01 | 2014-04-03 | 56, 57, 58 | 2013-03-27 | 2013-03-27 | 1d? | 110.5d | 0d |  | wuziyuan [50%]; caiguosen [50%] | 24h |
| 61 | 1.9.1.8 | 提交集成 | milestone | 0d? | 2014-04-03 | 2014-04-03 | 59, 60 | 2013-03-27 | 2013-03-27 | 0d | 172d |  |  | wuziyuan; caiguosen |  |
| 62 | 1.9.2 | VS插件开发方法研究 |  | 3d? | 2014-02-18 | 2014-02-20 |  |  |  |  | 140.5d |  | finish no earlier than 2014-02-20 | qiuying [133.3%] | 32h |

Notes:
- 33: 1. 增加配置项，指定风控结果推送模式：直接推送给本进程的交易服务/通过TCP推送给其它进程的交易服务/ 2. 把交易指令通过tcp接口发送给交易服务，含下单、撤单、审核结果、风控结果等 / 3. 单元测试： / 1) 配合交易服务、交易终端、风控终端进行测试
- 62: 研究VS插件开发方法，实现简单实例，找到微软的插件开发指南，将简单过程形成文档 / 提交结果： / 1. 简单实例 / 2. 微软VS插件开发指南 / 3. 简明扼要的VS插件开发方法。

| ID | WBS | Task | Type | Duration | Start | Finish | Predecessors | Baseline start | Baseline finish | Baseline duration | Total slack | Free slack | Constraint | Resources | Work |
| --- | --- | --- | --- | --- | --- | --- | --- | --- | --- | --- | --- | --- | --- | --- | --- |
| 63 | 1.9.3 | **策略客户端** |  | 51d | 2014-02-20 | 2014-05-01 |  | 2013-03-01 | 2013-04-01 | 22d? | 152d |  |  | qiuying | 864h |
| 64 | 1.9.3.1 | 需求设计 |  | 2d | 2014-02-20 | 2014-02-21 |  | 2013-03-01 | 2013-03-05 | 3d? | 157d | 5d | start no earlier than 2014-02-20 | liujunbo | 16h |
| 65 | 1.9.3.2 | 接口设计、详细设计 |  | 3d | 2014-03-03 | 2014-03-05 | 64 | 2013-03-08 | 2013-03-12 | 3d? | 152d | 0d | finish no earlier than 2014-03-05 | qiuying [50%]; yangguiming [50%] | 24h |
| 66 | 1.9.3.3 | 代码实现及单元测试 |  | 37d | 2014-03-06 | 2014-04-25 | 65 | 2013-03-13 | 2013-03-18 | 4d? | 90.5d | 0d | finish no earlier than 2014-04-25 | qiuying [49.1%]; yangguiming [59%] | 320h |
| 67 | 1.9.3.4 | QA模块测试 |  | 3d | 2014-04-28 | 2014-04-30 | 66 | 2013-03-27 | 2013-04-01 | 4d? | 90.5d | 0d |  | liujunbo [83.3%]; miaojun [83.3%] | 40h |
| 68 | 1.9.3.5 | BUG修复 |  | 1.88d | 2014-04-28 | 2014-04-29 | 66 | 2013-03-27 | 2013-03-27 | 1d? | 91.62d | 1.12d |  | qiuying [166.7%]; yangguiming | 40h |
| 69 | 1.9.3.6 | 提交集成 |  | 1d | 2014-05-01 | 2014-05-01 | 67, 68 | 2013-03-27 | 2013-03-27 | 0d | 90.5d |  |  | yangguiming; qiuying | 16h |
| 70 | 1.9.4 | 策略接口 |  | 2d? | 2014-03-06 | 2014-03-07 |  |  |  |  | 129.5d |  | finish no earlier than 2014-03-07 | yangguiming | 16h |
| 71 | 1.9.5 | **策略测试模块** |  | 20d? | 2014-05-12 | 2014-06-06 |  |  |  |  | 126d |  |  |  | 288h |
| 72 | 1.9.5.1 | 策略测试模块 |  | 10d? | 2014-05-12 | 2014-05-23 |  |  |  |  | 74.5d |  | finish no earlier than 2014-05-23 | yangguiming | 80h |
| 73 | 1.9.5.2 | 模拟交易管理 |  | 7.5d? | 2014-05-14 | 2014-05-23 |  |  |  |  | 74.5d |  | finish no earlier than 2014-05-23 | qiuying | 60h |
| 74 | 1.9.5.3 | 测试结果指标计算 |  | 5d? | 2014-06-02 | 2014-06-06 |  |  |  |  | 64.5d |  | start no earlier than 2014-06-02 | qiuying | 40h |
| 75 | 1.9.5.4 | 测试结果展示 |  | 7.5d? | 2014-05-14 | 2014-05-23 |  |  |  |  | 68.5d | 0d | finish no earlier than 2014-05-23 | wuziyuan | 60h |
| 76 | 1.9.5.5 | QA测试 |  | 5d? | 2014-05-26 | 2014-05-30 | 75 |  |  |  | 130d | 0d | start no earlier than 2014-05-26 | liujunbo [50%]; miaojun [50%] | 40h |
| 77 | 1.9.5.6 | 提交集成 | milestone | 1d? | 2014-06-02 | 2014-06-02 | 76 |  |  |  | 68.5d |  |  | liujunbo | 8h |
| 78 | 1.10 | **波动率计算服务** |  | 1d? | 2014-02-07 | 2014-02-07 |  |  |  |  | 211d |  |  |  |  |
| 79 | 1.10.1 | **波动率计算服务** |  | 1d? | 2014-02-07 | 2014-02-07 |  | 2013-03-01 | 2013-04-01 | 22d? | 211d |  |  |  |  |
| 80 | 1.10.1.1 | 需求设计 |  | 1d? | 2014-02-07 | 2014-02-07 |  | 2013-03-01 | 2013-03-05 | 3d? | 211d |  |  |  |  |
| 81 | 1.10.1.2 | 接口设计、详细设计 |  | 1d? | 2014-02-07 | 2014-02-07 |  | 2013-03-08 | 2013-03-12 | 3d? | 211d |  |  |  |  |
| 82 | 1.10.1.3 | 代码实现及单元测试 |  | 1d? | 2014-02-07 | 2014-02-07 |  | 2013-03-13 | 2013-03-18 | 4d? | 211d |  |  |  |  |
| 83 | 1.10.1.4 | QA模块测试 |  | 1d? | 2014-02-07 | 2014-02-07 |  | 2013-03-27 | 2013-04-01 | 4d? | 211d |  |  |  |  |
| 84 | 1.10.1.5 | BUG修复 |  | 1d? | 2014-02-07 | 2014-02-07 |  | 2013-03-27 | 2013-03-27 | 1d? | 211d |  |  |  |  |
| 85 | 1.10.1.6 | 提交集成 |  | 1d? | 2014-02-07 | 2014-02-07 |  | 2013-03-27 | 2013-03-27 | 0d | 211d |  |  |  |  |
| 86 | 1.11 | **终端** |  | 16d? | 2014-02-07 | 2014-02-28 |  |  |  |  | 196d |  |  |  | 8h |
| 87 | 1.11.1 | 交易终端-套利扩展-延后 |  | 1d? | 2014-02-07 | 2014-02-07 |  | 2013-03-01 | 2013-04-15 | 32d | 211d |  |  |  |  |
| 88 | 1.11.2 | 交易终端-期权及做市商扩展 |  | 1d? | 2014-02-07 | 2014-02-07 |  | 2013-03-01 | 2013-04-15 | 32d | 211d |  |  |  |  |
| 89 | 1.11.3 | 交易终端-策略管理扩展 |  | 1d? | 2014-02-07 | 2014-02-07 |  | 2013-03-01 | 2013-04-15 | 32d | 211d |  |  |  |  |
| 90 | 1.11.4 | 系统管理终端-策略管理扩展 |  | 1d? | 2014-02-07 | 2014-02-07 |  | 2013-03-01 | 2013-04-15 | 32d | 211d |  |  |  |  |
| 91 | 1.11.5 | 系统管理终端-模拟行情控制扩展(安排在行情服务中) |  | 1d? | 2014-02-07 | 2014-02-07 |  | 2013-03-01 | 2013-04-15 | 32d | 211d |  |  |  |  |
| 92 | 1.11.6 | 系统管理终端-结算-套利扩展-延后 |  | 1d? | 2014-02-07 | 2014-02-07 |  |  |  |  | 59d |  |  |  |  |
| 93 | 1.11.7 | 风控终端一期-主从扩展 |  | 8d | 2014-02-19 | 2014-02-28 |  |  |  |  | 196d |  | finish no earlier than 2014-02-28 | wuziyuan [12.5%] | 8h |
| 94 | 1.11.8 | 风控终端二期(已安排在风控服务中) |  | 1d? | 2014-02-07 | 2014-02-07 |  |  |  |  | 211d |  |  |  |  |
| 95 | 1.11.9 | 统计展现终端-无 |  | 1d? | 2014-02-07 | 2014-02-07 |  |  |  |  | 211d |  |  |  |  |

Notes:
- 63: 初步考虑用VS插件来实现
- 70: VC写的标准DLL，供C#调用，实现下单、撤单、取当前行情快照、取询价信息、取当前成交数据等操作。
- 88: 1. 增加应价下单板块，能下双方向报单，并指定报单时效，板块中显示指导价 / 2. 接收显示询价指令，并自动弹出应价下单板块 / 3. 在行情中显示指导价 / 4. 增加行权操作指令 / 5. 交易数据管理中，处理期权的保证金、权利金计算 / 6. 单元测试： / 1) 结合交易服务进行测试
- 89: 见需求 / 单元测试，结合交易服务和策略服务进行测试
- 90: 见需求 / 单元测试： / 结合交易服务和策略服务进行测试
- 91: 1. 从交易服务器查询当前系统是否是模拟系统/ 2. 如果为模拟系统，在管理终端上配置所用行情时间段(可以跨天) / 3. 如果为模拟系统，在管理终端上配置行情回放方式，按时间回放/连续回放(不做时间延迟) / 4. 如果为模拟系统，在管理终端上可以停止回放/恢复回放/从头回放 / 5. 单元测试： / 1) 结合交易服务器、行情服务器、交易终端进行测试
- 93: 1. 用户登陆状态信息订阅和推送 / 1) 去掉定时查询用户登陆状态的机制，改为1)打开窗口时查一次; 2)加一个查询登陆状态按钮，点击时查一遍 / 2) 系统管理终端和风控终端登陆后，向服务器订阅用户登陆状态信息 / 3) 系统管理终端和风控终端处理服务器响应并处理服务器端推送回来的所有用户的登录信息，如果当前打开了用户管理窗口，则正确更新窗口里的登录状态内容。(推送的信息包含用户ID、用户类型、用户登录状态等)/ 2. 单元测试方法： / 1) 用风控终端登录风控服务，验证交易用户登录状态是否正确。

| ID | WBS | Task | Type | Duration | Start | Finish | Baseline start | Baseline finish | Baseline duration | Total slack |
| --- | --- | --- | --- | --- | --- | --- | --- | --- | --- | --- |
| 96 | 1.12 | **集成、性能及压力测试** |  | 1d? | 2014-02-07 | 2014-02-07 | 2013-04-16 | 2013-05-27 | 30d | 211d |
| 97 | 1.12.1 | 集成测试 |  | 1d? | 2014-02-07 | 2014-02-07 | 2013-04-16 | 2013-05-13 | 20d | 211d |
| 98 | 1.12.2 | 性能及压力测试 |  | 1d? | 2014-02-07 | 2014-02-07 | 2013-05-14 | 2013-05-27 | 10d | 211d |
| 99 | 1.13 | **验收测试** |  | 1d? | 2014-02-07 | 2014-02-07 | 2013-05-28 | 2013-07-01 | 25d? | 211d |
| 100 | 1.13.1 | α测试 |  | 1d? | 2014-02-07 | 2014-02-07 | 2013-05-28 | 2013-06-03 | 5d? | 211d |
| 101 | 1.13.2 | β测试 |  | 1d? | 2014-02-07 | 2014-02-07 | 2013-06-04 | 2013-07-01 | 20d? | 211d |
| 102 | 1.14 | 正式发布 | milestone | 0d | 2014-02-07 | 2014-02-07 | 2013-07-01 | 2013-07-01 | 0d | 212d |
